How a schedule from MS Project changed from version to version. A marks actual dates.

## Version 1 (saved 2020-11-22, file Kalendarz_projektu.mpp)

Note of the change: Kalendarz

| ID | WBS | Task | Duration | Start | Finish | Predecessors | Total float |
| --- | --- | --- | --- | --- | --- | --- | --- |
| 1 | 1 | **Planowanie projektu** | 69d | 2020-11-23 | 2021-03-01 |  | 0d |
| 2 |  | Przegląd podobych rozwiązań | 4d | 2020-11-23 | 2020-11-26 |  | 0d |
| 3 |  | Próba dopasowania się do konkurencji | 4d | 2020-11-27 | 2020-12-02 | 2 | 0d |
| 4 |  | Przeanalizowanie współpracy czujników | 3d | 2020-12-03 | 2020-12-07 | 3 | 0d |
| 5 |  | Rozwiązanie techniczne doświetlania rośliny | 4d | 2020-12-08 | 2020-12-11 | 4 | 0d |
| 6 |  | Planowanie projektu ukończone | 0d | 2020-12-11 | 2020-12-11 | 5 | 0d |
| 7 | 1.6 | **Realizowanie projektu** | 54d | 2020-12-14 | 2021-03-01 |  | 0d |
| 8 |  | Stworzenie schematu elektrycznego projektu | 4d | 2020-12-14 | 2020-12-17 | 6 | 0d |
| 9 |  | Testowanie poprawności działania czujników | 2d | 2020-12-18 | 2020-12-21 | 8 | 0d |
| 10 |  | Implementacja komunikacji z modułem ESP8266 | 6d | 2020-12-22 | 2020-12-29 | 9 | 0d |
| 11 |  | Tworzenie aplikacji do komunikacji | 16d | 2020-12-18 | 2021-01-12 | 8 | 9d |
| 12 |  | Tworzenie aplikacji zajmującej się identyfikacją rodzaju rośliny | 18d | 2020-12-18 | 2021-01-14 | 8 | 7d |
| 13 |  | Realizacja montażu systemu doświetlania | 2d | 2020-12-30 | 2020-12-31 | 10 | 0d |
| 14 |  | Realizacja połączeń elektrycznych na płytce stykowej | 2d | 2021-01-04 | 2021-01-05 | 13 | 0d |
| 15 |  | Przeniesienie projektu na płytkę uniwersalną | 2d | 2021-01-07 | 2021-01-08 | 14 | 0d |
| 16 |  | Zaprojektowanie własnej płytki | 8d | 2021-01-11 | 2021-01-20 | 15 | 0d |
| 17 |  | Połączenie systemu wykrywania rośliny i systemu zarządzania | 2d | 2021-01-15 | 2021-01-18 | 11, 12 | 7d |
| 18 |  | Przygotowanie obudowy i instrukcji użytkowania | 5d | 2021-01-21 | 2021-01-27 | 16 | 0d |
| 19 |  | Planowanie i realizacja produkcji | 6d | 2021-01-28 | 2021-02-04 | 17, 18 | 0d |
| 20 |  | Realizowanie projektu ukończone | 0d | 2021-02-04 | 2021-02-04 | 19 | 3d |
| 21 | 1.6.14 | **Monitorowanie projektu** | 17d | 2021-02-05 | 2021-03-01 |  | 0d |
| 22 |  | Testowanie produktu przez użytkowników pre-orderowych | 14d | 2021-02-05 | 2021-02-24 | 20 | 3d |
| 23 |  | Marketing | 14d | 2021-02-05 | 2021-02-24 | 20 | 3d |
| 24 |  | Ostateczne poprawy błędów | 17d | 2021-02-05 | 2021-03-01 | 19 | 0d |

## Version 2 (saved 2020-11-28, file Kalendarz_projektu.mpp)

Note of the change: Osobowości/scenariusze/oferty pracy

Last finish 2021-03-01 → 2021-03-02 (+1d).

Added:

| ID | Task | Duration | Start | Finish | Resources |
| --- | --- | --- | --- | --- | --- |
| 1 | **Stałe koszta** | 70d | 2020-11-23 | 2021-03-02 | Wynajem biura [0.1%] |

Changed:

| ID | Task | Start | Finish | Duration | Total float | Other |
| --- | --- | --- | --- | --- | --- | --- |
| 2 | **Planowanie projektu** |  | 2021-03-01 → 2021-03-02 (+1d) | 69d → 70d |  |  |
| 3 | Przegląd podobych rozwiązań |  |  |  |  | resources Janusz Marketing manager; Jeff Elektronik; Kamil Mechanik; Krzysztof Logistyk; Oskar Programista wysokopoziomowy; Stefan Team lead; Tomasz Programista aplikacji mobilnych; Wynajem biura [0.1%] → Janusz Marketing manager; Jeff Elektronik; Kamil Mechanik; Krzysztof Logistyk; Oskar Programista wysokopoziomowy; Stefan Team lead; Tomasz Programista aplikacji mobilnych |
| 4 | Próba dopasowania się do konkurencji |  |  |  |  | resources Stefan Team lead; Wynajem biura [0.1%]; Janusz Marketing manager → Stefan Team lead; Janusz Marketing manager |
| 5 | Przeanalizowanie współpracy czujników |  |  |  |  | resources Jeff Elektronik; Kamil Mechanik; Wynajem biura [0.1%]; Części do testów → Jeff Elektronik; Kamil Mechanik; Części do testów [1 kpl] |
| 6 | Rozwiązanie techniczne doświetlania rośliny |  |  |  |  | resources Jeff Elektronik; Kamil Mechanik; Wynajem biura [0.1%]; Części do testów → Jeff Elektronik; Kamil Mechanik; Części do testów [1 kpl] |
| 8 | **Realizowanie projektu** |  | 2021-03-01 → 2021-03-02 (+1d) | 54d → 55d |  |  |
| 9 | Stworzenie schematu elektrycznego projektu |  |  |  |  | resources Jeff Elektronik; Kamil Mechanik; Wynajem biura [0.1%] → Jeff Elektronik; Kamil Mechanik |
| 10 | Testowanie poprawności działania czujników |  | 2020-12-21 → 2020-12-22 (+1d) | 2d → 3d |  | resources Jeff Elektronik; Kamil Mechanik; Wynajem biura [0.1%]; Części do testów → Jeff Elektronik; Kamil Mechanik; Części do testów [1 kpl] |
| 11 | Implementacja komunikacji z modułem ESP8266 | 2020-12-22 → 2020-12-23 (+1d) | 2020-12-29 → 2020-12-30 (+1d) |  |  | resources Jeff Elektronik; Kamil Mechanik; Wynajem biura [0.1%]; Części do testów → Jeff Elektronik; Kamil Mechanik; Części do testów [1 kpl] |
| 12 | Tworzenie aplikacji do komunikacji |  |  |  | 9d → 10d | resources Oskar Programista wysokopoziomowy; Wynajem biura [0.1%]; Części do testów → Oskar Programista wysokopoziomowy; Części do testów [1 kpl] |
| 13 | Tworzenie aplikacji zajmującej się identyfikacją rodzaju rośliny |  |  |  | 7d → 8d | resources Tomasz Programista aplikacji mobilnych; Wynajem biura [0.1%] → Tomasz Programista aplikacji mobilnych |
| 14 | Realizacja montażu systemu doświetlania | 2020-12-30 → 2020-12-31 (+1d) | 2020-12-31 → 2021-01-04 (+4d) |  |  | resources Jeff Elektronik; Kamil Mechanik; Wynajem biura [0.1%] → Jeff Elektronik; Kamil Mechanik |
| 15 | Realizacja połączeń elektrycznych na płytce stykowej | 2021-01-04 → 2021-01-05 (+1d) | 2021-01-05 → 2021-01-07 (+2d) |  |  | resources Jeff Elektronik; Kamil Mechanik; Wynajem biura [0.1%]; Części do testów → Jeff Elektronik; Kamil Mechanik; Części do testów [1 kpl] |
| 16 | Przeniesienie projektu na płytkę uniwersalną | 2021-01-07 → 2021-01-08 (+1d) | 2021-01-08 → 2021-01-11 (+3d) |  |  | resources Jeff Elektronik; Kamil Mechanik; Wynajem biura [0.1%]; Części do testów; Druk płytki → Jeff Elektronik; Kamil Mechanik; Części do testów [1 kpl]; Druk płytki [1 kpl] |
| 17 | Zaprojektowanie własnej płytki | 2021-01-11 → 2021-01-12 (+1d) | 2021-01-20 → 2021-01-21 (+1d) |  |  | resources Jeff Elektronik; Kamil Mechanik; Wynajem biura [0.1%]; Części do testów; Druk płytki → Jeff Elektronik; Kamil Mechanik; Części do testów [1 kpl]; Druk płytki [1 kpl] |
| 18 | Połączenie systemu wykrywania rośliny i systemu zarządzania |  |  |  | 7d → 8d | resources Oskar Programista wysokopoziomowy; Tomasz Programista aplikacji mobilnych; Wynajem biura [0.1%] → Oskar Programista wysokopoziomowy; Tomasz Programista aplikacji mobilnych |
| 19 | Przygotowanie obudowy i instrukcji użytkowania | 2021-01-21 → 2021-01-22 (+1d) | 2021-01-27 → 2021-01-28 (+1d) |  |  | resources Jeff Elektronik; Kamil Mechanik; Wynajem biura [0.1%]; Części do testów; Druk płytki → Jeff Elektronik; Kamil Mechanik; Części do testów [1 kpl]; Druk płytki [1 kpl] |
| 20 | Planowanie i realizacja produkcji | 2021-01-28 → 2021-01-29 (+1d) | 2021-02-04 → 2021-02-05 (+1d) |  |  |  |
| 21 | Realizowanie projektu ukończone | 2021-02-04 → 2021-02-05 (+1d) | 2021-02-04 → 2021-02-05 (+1d) |  |  |  |
| 22 | **Monitorowanie projektu** | 2021-02-05 → 2021-02-08 (+3d) | 2021-03-01 → 2021-03-02 (+1d) |  |  |  |
| 23 | Testowanie produktu przez użytkowników pre-orderowych | 2021-02-05 → 2021-02-08 (+3d) | 2021-02-24 → 2021-02-25 (+1d) |  |  | resources Wynajem biura [0.1%]; Części do testów → Części do testów [1 kpl] |
| 24 | Marketing | 2021-02-05 → 2021-02-08 (+3d) | 2021-02-24 → 2021-02-25 (+1d) |  |  |  |
| 25 | Ostateczne poprawy błędów | 2021-02-05 → 2021-02-08 (+3d) | 2021-03-01 → 2021-03-02 (+1d) |  |  | resources Jeff Elektronik; Kamil Mechanik; Krzysztof Logistyk; Oskar Programista wysokopoziomowy; Stefan Team lead; Tomasz Programista aplikacji mobilnych; Wynajem biura [0.1%] → Jeff Elektronik; Kamil Mechanik; Krzysztof Logistyk; Oskar Programista wysokopoziomowy; Stefan Team lead; Tomasz Programista aplikacji mobilnych |

## Version 3 (saved 2020-12-13, file 6.Kalendarz_projektu.mpp)

Note of the change: The end

Last finish 2021-03-02 → 2021-04-09 (+38d). Complete tasks 0 → 21.

Changed:

| ID | Task | Start | Finish | Duration | Complete | Total float | Other |
| --- | --- | --- | --- | --- | --- | --- | --- |
| 1 | **Stałe koszta** | 2020-11-23 → 2020-12-13 A (+20d) | 2021-03-02 → 2021-04-09 A (+38d) | 70d → 82d | 0% → 100% | 0d → none | baseline start none → 2020-11-23; baseline finish none → 2021-03-02 |
| 2 | **Planowanie projektu** | 2020-11-23 → 2020-12-13 A (+20d) | 2021-03-02 → 2021-04-09 A (+38d) | 70d → 82d | 0% → 100% | 0d → none | baseline start none → 2020-11-23; baseline finish none → 2021-03-02 |
| 3 | Przegląd podobych rozwiązań | 2020-11-23 → 2020-12-13 A (+20d) | 2020-11-26 → 2020-12-17 A (+21d) |  | 0% → 100% | 0d → none | baseline start none → 2020-11-23; baseline finish none → 2020-11-26 |
| 4 | Próba dopasowania się do konkurencji | 2020-11-27 → 2020-12-17 A (+20d) | 2020-12-02 → 2020-12-23 A (+21d) |  | 0% → 100% | 0d → none | baseline start none → 2020-11-27; baseline finish none → 2020-12-02 |
| 5 | Przeanalizowanie współpracy czujników | 2020-12-03 → 2020-12-24 A (+21d) | 2020-12-07 → 2020-12-28 A (+21d) |  | 0% → 100% | 0d → none | baseline start none → 2020-12-03; baseline finish none → 2020-12-07 |
| 6 | Rozwiązanie techniczne doświetlania rośliny | 2020-12-08 → 2020-12-29 A (+21d) | 2020-12-11 → 2021-01-04 A (+24d) |  | 0% → 100% | 0d → none | baseline start none → 2020-12-08; baseline finish none → 2020-12-11 |
| 7 | Planowanie projektu ukończone | 2020-12-11 → 2021-01-04 A (+24d) | 2020-12-11 → 2021-01-04 A (+24d) |  | 0% → 100% | 0d → none | baseline start none → 2020-12-11; baseline finish none → 2020-12-11 |
| 8 | **Realizowanie projektu** | 2020-12-14 → 2021-01-12 A (+29d) | 2021-03-02 → 2021-04-09 A (+38d) | 55d → 63d | 0% → 100% | 0d → none | baseline start none → 2020-12-14; baseline finish none → 2021-03-02 |
| 9 | Stworzenie schematu elektrycznego projektu | 2020-12-14 → 2021-01-12 A (+29d) | 2020-12-17 → 2021-01-18 A (+32d) | 4d → 5d | 0% → 100% | 0d → none | baseline start none → 2020-12-14; baseline finish none → 2020-12-17 |
| 10 | Testowanie poprawności działania czujników | 2020-12-18 → 2021-01-19 A (+32d) | 2020-12-22 → 2021-01-22 A (+31d) | 3d → 4d | 0% → 100% | 0d → none | resources Jeff Elektronik; Kamil Mechanik; Części do testów [1 kpl] → Jeff Elektronik; Kamil Mechanik; Części do testów [3 kpl]; baseline start none → 2020-12-18; baseline finish none → 2020-12-22 |
| 11 | Implementacja komunikacji z modułem ESP8266 | 2020-12-23 → 2021-01-22 A (+30d) | 2020-12-30 → 2021-01-29 A (+30d) |  | 0% → 100% | 0d → none | baseline start none → 2020-12-23; baseline finish none → 2020-12-30 |
| 12 | Tworzenie aplikacji do komunikacji | 2020-12-18 → 2021-01-19 A (+32d) | 2021-01-12 → 2021-02-06 A (+25d) | 16d → 14d | 0% → 100% | 10d → none | baseline start none → 2020-12-18; baseline finish none → 2021-01-12 |
| 13 | Tworzenie aplikacji zajmującej się identyfikacją rodzaju rośliny | 2020-12-18 → 2021-01-19 A (+32d) | 2021-01-14 → 2021-02-15 A (+32d) | 18d → 20d | 0% → 100% | 8d → none | baseline start none → 2020-12-18; baseline finish none → 2021-01-14 |
| 14 | Realizacja montażu systemu doświetlania | 2020-12-31 → 2021-02-01 A (+32d) | 2021-01-04 → 2021-02-02 A (+29d) |  | 0% → 100% | 0d → none | baseline start none → 2020-12-31; baseline finish none → 2021-01-04 |
| 15 | Realizacja połączeń elektrycznych na płytce stykowej | 2021-01-05 → 2021-02-03 A (+29d) | 2021-01-07 → 2021-02-05 A (+29d) | 2d → 3d | 0% → 100% | 0d → none | resources Jeff Elektronik; Kamil Mechanik; Części do testów [1 kpl] → Jeff Elektronik; Kamil Mechanik; Części do testów [2 kpl]; baseline start none → 2021-01-05; baseline finish none → 2021-01-07 |
| 16 | Przeniesienie projektu na płytkę uniwersalną | 2021-01-08 → 2021-02-05 A (+28d) | 2021-01-11 → 2021-02-10 A (+30d) | 2d → 4d | 0% → 100% | 0d → none | resources Jeff Elektronik; Kamil Mechanik; Części do testów [1 kpl]; Druk płytki [1 kpl] → Jeff Elektronik; Kamil Mechanik; Części do testów [2 kpl]; Druk płytki [2 kpl]; baseline start none → 2021-01-08; baseline finish none → 2021-01-11 |
| 17 | Zaprojektowanie własnej płytki | 2021-01-12 → 2021-02-09 A (+28d) | 2021-01-21 → 2021-02-12 A (+22d) | 8d → 4d | 0% → 100% | 0d → none | resources Jeff Elektronik; Kamil Mechanik; Części do testów [1 kpl]; Druk płytki [1 kpl] → Jeff Elektronik; Kamil Mechanik; Części do testów [0.75 kpl]; Druk płytki [0.75 kpl]; baseline start none → 2021-01-12; baseline finish none → 2021-01-21 |
| 18 | Połączenie systemu wykrywania rośliny i systemu zarządzania | 2021-01-15 → 2021-02-16 A (+32d) | 2021-01-18 → 2021-02-17 A (+30d) |  | 0% → 100% | 8d → none | baseline start none → 2021-01-15; baseline finish none → 2021-01-18 |
| 19 | Przygotowanie obudowy i instrukcji użytkowania | 2021-01-22 → 2021-02-15 A (+24d) | 2021-01-28 → 2021-02-18 A (+21d) | 5d → 4d | 0% → 100% | 0d → none | resources Jeff Elektronik; Kamil Mechanik; Części do testów [1 kpl]; Druk płytki [1 kpl] → Jeff Elektronik; Kamil Mechanik; Części do testów [0.8 kpl]; Druk płytki [0.8 kpl]; baseline start none → 2021-01-22; baseline finish none → 2021-01-28 |
| 20 | Planowanie i realizacja produkcji | 2021-01-29 → 2021-02-22 A (+24d) | 2021-02-05 → 2021-03-08 A (+31d) | 6d → 11d | 0% → 100% | 0d → none | baseline start none → 2021-01-29; baseline finish none → 2021-02-05 |
| 21 | Realizowanie projektu ukończone | 2021-02-05 → 2021-03-08 A (+31d) | 2021-02-05 → 2021-03-08 A (+31d) |  | 0% → 100% | 3d → none | baseline start none → 2021-02-05; baseline finish none → 2021-02-05 |
| 22 | **Monitorowanie projektu** | 2021-02-08 → 2021-03-08 A (+28d) | 2021-03-02 → 2021-04-09 A (+38d) | 17d → 24d | 0% → 100% | 0d → none | baseline start none → 2021-02-08; baseline finish none → 2021-03-02 |
| 23 | Testowanie produktu przez użytkowników pre-orderowych | 2021-02-08 → 2021-03-08 A (+28d) | 2021-02-25 → 2021-03-26 A (+29d) | 14d → 15d | 0% → 100% | 3d → none | resources Części do testów [1 kpl] → Części do testów [2 kpl]; baseline start none → 2021-02-08; baseline finish none → 2021-02-25 |
| 24 | Marketing | 2021-02-08 → 2021-03-09 A (+29d) | 2021-02-25 → 2021-03-29 A (+32d) | 14d → 15d | 0% → 100% | 3d → none | baseline start none → 2021-02-08; baseline finish none → 2021-02-25 |
| 25 | Ostateczne poprawy błędów | 2021-02-08 → 2021-03-09 A (+29d) | 2021-03-02 → 2021-04-09 A (+38d) | 17d → 23d | 0% → 100% | 0d → none | baseline start none → 2021-02-08; baseline finish none → 2021-03-02 |
